# Pikes Peak 2014 2015

Schedule from GanttProject, 2014-07-13 to 2015-06-28.
Buckeye Current
Holidays every year on 01-01, 07-04, 11-11, 12-25

## Calendars

- Project calendar: Mon-Sun working. Exceptions (off unless hours are given): 2014-09-01, 2014-10-13, 2014-11-27, 2015-01-19, 2015-02-16, 2015-05-25.

## Schedule

| ID | WBS | Task | Type | Duration | Start | Finish | Predecessors |
| --- | --- | --- | --- | --- | --- | --- | --- |
| 1 | 1 | Pikes Peak | milestone | 0d | 2015-06-28 | 2015-06-28 |  |
| 2 | 2 | Autum Sem. | milestone | 0d | 2014-08-27 | 2014-08-27 |  |
| 3 | 3 | Autum Finals |  | 7d | 2014-12-11 | 2014-12-17 |  |
| 4 | 4 | Winter Break |  | 26d | 2014-12-18 | 2015-01-14 |  |
| 5 | 5 | Spring Sem | milestone | 0d | 2015-01-13 | 2015-01-13 |  |
| 6 | 6 | Spring Finals |  | 7d | 2015-04-29 | 2015-05-05 |  |
| 7 | 7 | Summer Break | milestone | 0d | 2015-05-04 | 2015-05-04 |  |
| 8 | 8 | Define Requirements (RW-3) |  | 3d | 2014-07-13 | 2014-07-15 |  |
| 9 | 9 | Design System (RW-3) |  | 4d | 2014-07-16 | 2014-07-19 | 8 |
| 10 | 10 | **Build (RW-3)** |  | 274d | 2014-07-20 | 2015-04-27 | 9 |
| 11 | 10.1 | **Powertrain** |  | 223d | 2014-07-20 | 2015-03-07 | 9 |
| 12 | 10.1.1 | Define Requirements (Powertrain) |  | 33d | 2014-07-20 | 2014-08-21 | 9 |
| 13 | 10.1.2 | Design System (Powertrain) |  | 7d | 2014-08-22 | 2014-08-28 | 12 |
| 14 | 10.1.3 | **Build (Powertrain)** |  | 157d | 2014-08-29 | 2015-02-08 | 13 |
| 15 | 10.1.3.1 | **Motor** |  | 69d | 2014-08-29 | 2014-11-07 | 13 |
| 16 | 10.1.3.1.1 | Define Requirements (Motor) |  | 1d | 2014-08-29 | 2014-08-29 | 13 |
| 17 | 10.1.3.1.2 | **Design System (Motor)** |  | 8d | 2014-08-30 | 2014-09-07 | 16 |
| 18 | 10.1.3.1.2.1 | Choose Motor |  | 8d | 2014-08-30 | 2014-09-07 | 16 |
| 19 | 10.1.3.1.3 | **Build (Motor)** |  | 60d | 2014-09-08 | 2014-11-07 | 17 |
| 20 | 10.1.3.1.3.1 | Purchase Motor |  | 30d | 2014-09-08 | 2014-10-07 | 17 |
| 21 | 10.1.3.1.3.2 | Recieve Motor |  | 30d | 2014-10-08 | 2014-11-07 | 20 |
| 22 | 10.1.3.2 | **Motor Controller** |  | 99d | 2014-08-29 | 2014-12-09 | 13 |
| 23 | 10.1.3.2.1 | Define Requirements (M/C) |  | 1d | 2014-08-29 | 2014-08-29 | 13 |
| 24 | 10.1.3.2.2 | **Design System (M/C)** |  | 8d | 2014-08-30 | 2014-09-07 | 23 |
| 25 | 10.1.3.2.2.1 | Choose Controller |  | 8d | 2014-08-30 | 2014-09-07 | 23 |

| ID | WBS | Task | Duration | Start | Finish | Predecessors |
| --- | --- | --- | --- | --- | --- | --- |
| 26 | 10.1.3.2.3 | **Build (M/C)** | 90d | 2014-09-08 | 2014-12-09 | 24 |
| 27 | 10.1.3.2.3.1 | Purchase Controller | 30d | 2014-09-08 | 2014-10-07 | 24 |
| 28 | 10.1.3.2.3.2 | Recieve Controller | 30d | 2014-10-08 | 2014-11-07 | 27 |
| 29 | 10.1.3.2.3.3 | Configure Controller to Motor | 30d | 2014-11-08 | 2014-12-09 | 21, 28 |
| 30 | 10.1.3.3 | **Pack** | 157d | 2014-08-29 | 2015-02-08 | 13 |
| 31 | 10.1.3.3.1 | Define Requirements (Pack) | 1d | 2014-08-29 | 2014-08-29 | 13 |
| 32 | 10.1.3.3.2 | **Design System (Pack)** | 22d | 2014-08-30 | 2014-09-21 | 31 |
| 33 | 10.1.3.3.2.1 | Choose Battery | 8d | 2014-08-30 | 2014-09-07 | 31 |
| 34 | 10.1.3.3.2.2 | Design Pack | 14d | 2014-09-08 | 2014-09-21 | 33 |
| 35 | 10.1.3.3.3 | **Build (Pack)** | 134d | 2014-09-22 | 2015-02-08 | 32 |
| 36 | 10.1.3.3.3.1 | Purchase Battery | 30d | 2014-09-22 | 2014-10-22 | 32 |
| 37 | 10.1.3.3.3.2 | Recieve Battery | 30d | 2014-10-23 | 2014-11-22 | 36 |
| 38 | 10.1.3.3.3.3 | Test Cells | 14d | 2014-11-23 | 2014-12-07 | 37 |
| 39 | 10.1.3.3.3.4 | Module | 60d | 2014-12-08 | 2015-02-08 | 37, 38 |
| 40 | 10.1.3.3.3.5 | Sense Wiring | 60d | 2014-11-23 | 2015-01-25 | 37, 110 |
| 41 | 10.1.3.3.3.6 | HV bussing | 60d | 2014-11-23 | 2015-01-25 | 37 |
| 42 | 10.1.3.4 | Final Drive Design | 30d | 2014-09-08 | 2014-10-07 | 13, 18, 25 |
| 43 | 10.1.3.5 | Cooling | 30d | 2014-09-08 | 2014-10-07 | 13, 18, 25 |
| 44 | 10.1.4 | **Integration Testing (Powertrain)** | 84d | 2014-12-10 | 2015-03-07 |  |
| 45 | 10.1.4.1 | Test Motor with Controller | 60d | 2014-12-10 | 2015-02-10 | 29, 43 |
| 46 | 10.1.4.2 | Test Battery with BMS | 30d | 2015-02-04 | 2015-03-06 | 120 |
| 47 | 10.1.4.3 | Test Full Powertrain On Dyno [not needed] | 1d | 2015-03-07 | 2015-03-07 | 14, 45, 46 |
| 48 | 10.2 | **Chassis** | 236d | 2014-07-20 | 2015-03-20 | 9 |
| 49 | 10.2.1 | Define Requirements (Chassis) | 31d | 2014-07-20 | 2014-08-19 | 9 |
| 50 | 10.2.2 | Design System (Chassis) | 11d | 2014-08-20 | 2014-08-30 | 49 |

| ID | WBS | Task | Duration | Start | Finish | Predecessors |
| --- | --- | --- | --- | --- | --- | --- |
| 51 | 10.2.3 | **Build (Chassis)** | 164d | 2014-08-31 | 2015-02-18 |  |
| 52 | 10.2.3.1 | **Frame** | 110d | 2014-08-31 | 2014-12-22 | 50 |
| 53 | 10.2.3.1.1 | Define Requirements(Frame) | 1d | 2014-08-31 | 2014-08-31 | 50 |
| 54 | 10.2.3.1.2 | **Design (Frame)** | 35d | 2014-09-02 | 2014-10-06 | 53 |
| 55 | 10.2.3.1.2.1 | Select Frame | 7d | 2014-09-02 | 2014-09-08 |  |
| 56 | 10.2.3.1.2.2 | Purchase Frame | 14d | 2014-09-09 | 2014-09-22 | 55 |
| 57 | 10.2.3.1.2.3 | Get Frame CAD | 14d | 2014-09-09 | 2014-09-22 | 55 |
| 58 | 10.2.3.1.2.4 | CAD rolling chassis | 14d | 2014-09-23 | 2014-10-06 | 57 |
| 59 | 10.2.3.1.3 | **Build (Frame)** | 74d | 2014-10-07 | 2014-12-22 | 54 |
| 60 | 10.2.3.1.3.1 | Frame inspection | 30d | 2014-10-07 | 2014-11-06 | 54 |
| 61 | 10.2.3.1.3.2 | Assemble rolling Chassis | 14d | 2014-11-07 | 2014-11-21 | 56, 60 |
| 62 | 10.2.3.1.3.3 | Assign Chasis Volume | 7d | 2014-10-07 | 2014-10-14 | 57, 58 |
| 63 | 10.2.3.1.3.4 | Place Components [delete] | 1d | 2014-10-15 | 2014-10-15 | 62 |
| 64 | 10.2.3.1.3.5 | Do required rolling Chassis Maintienance | 30d | 2014-11-22 | 2014-12-22 | 61 |
| 65 | 10.2.3.2 | **Mounting Hardware** | 121d | 2014-10-15 | 2015-02-18 | 50, 62 |
| 66 | 10.2.3.2.1 | Design Requirements (Mounting) | 14d | 2014-10-15 | 2014-10-28 | 50 |
| 67 | 10.2.3.2.2 | **Design (Mounting)** | 47d | 2014-11-22 | 2015-01-10 | 66, 98 |
| 68 | 10.2.3.2.2.1 | Define Requirements (Battery Frame) | 7d | 2014-11-22 | 2014-11-29 | 34, 66 |
| 69 | 10.2.3.2.2.2 | Design (Battery Frame) | 40d | 2014-11-30 | 2015-01-10 | 68 |
| 70 | 10.2.3.2.2.3 | Define Requirements (Motor Mount) | 7d | 2014-11-22 | 2014-11-29 | 18, 66 |
| 71 | 10.2.3.2.2.4 | Design (Motor Mount) | 40d | 2014-11-30 | 2015-01-10 | 70 |
| 72 | 10.2.3.2.2.5 | Define Requirements (Controller Mount) | 7d | 2014-11-22 | 2014-11-29 | 25, 66 |
| 73 | 10.2.3.2.2.6 | Design (Controller Mount) | 40d | 2014-11-30 | 2015-01-10 | 72 |
| 74 | 10.2.3.2.2.7 | Define Requirements (Fairing Mount) | 7d | 2014-11-22 | 2014-11-29 | 66 |
| 75 | 10.2.3.2.2.8 | Design (Fairing Mount) | 14d | 2014-11-30 | 2014-12-13 | 74, 98 |

| ID | WBS | Task | Duration | Start | Finish | Predecessors |
| --- | --- | --- | --- | --- | --- | --- |
| 76 | 10.2.3.2.3 | **Build (Mounting)** | 37d | 2015-01-11 | 2015-02-18 | 67 |
| 77 | 10.2.3.2.3.1 | Check CAD for interference | 7d | 2015-01-11 | 2015-01-17 | 67 |
| 78 | 10.2.3.2.3.2 | Build (Battery frame) | 30d | 2015-01-18 | 2015-02-18 | 69, 77 |
| 79 | 10.2.3.2.3.3 | Build (Motor Mount) | 30d | 2015-01-18 | 2015-02-18 | 71, 77 |
| 80 | 10.2.3.2.3.4 | Build (Controller Mount) | 30d | 2015-01-18 | 2015-02-18 | 73, 77 |
| 81 | 10.2.3.2.3.5 | Build (Fairing Mount) | 30d | 2015-01-18 | 2015-02-18 | 75, 77 |
| 82 | 10.2.3.3 | **Suspension and Brakes** | 58d | 2014-08-31 | 2014-10-29 | 50 |
| 83 | 10.2.3.3.1 | Define Requirements (S and B) | 14d | 2014-08-31 | 2014-09-14 | 50 |
| 84 | 10.2.3.3.2 | **Design (S and B)** | 44d | 2014-09-15 | 2014-10-29 | 83 |
| 85 | 10.2.3.3.2.1 | Choose Suspension | 14d | 2014-09-15 | 2014-09-28 | 83 |
| 86 | 10.2.3.3.2.2 | Choose Brakes | 14d | 2014-09-15 | 2014-09-28 | 83 |
| 87 | 10.2.3.3.2.3 | Purchase Suspendsion Components | 30d | 2014-09-29 | 2014-10-29 | 85 |
| 88 | 10.2.3.3.2.4 | Purchase Brakes | 30d | 2014-09-29 | 2014-10-29 | 86 |
| 89 | 10.2.3.4 | **Build (S and B)** | 30d | 2015-01-11 | 2015-02-10 |  |
| 90 | 10.2.3.4.1 | Suspension Testing and Tunning | 30d | 2015-01-11 | 2015-02-10 | 67 |
| 91 | 10.2.4 | **Integration Test (Chassis)** | 30d | 2015-02-19 | 2015-03-20 | 51, 52, 65, 82 |
| 92 | 10.2.4.1 | Test Fit mounting hardware | 30d | 2015-02-19 | 2015-03-20 | 51 |
| 93 | 10.3 | **Aerodynamics** | 210d | 2014-07-20 | 2015-02-22 | 9 |
| 94 | 10.3.1 | Define Requirements (Aero) | 44d | 2014-07-20 | 2014-09-02 | 9 |
| 95 | 10.3.2 | **Design System (Aero)** | 99d | 2014-09-03 | 2014-12-13 | 94 |
| 96 | 10.3.2.1 | Decide Fairing Material | 7d | 2014-09-03 | 2014-09-09 | 94 |
| 97 | 10.3.2.2 | Define Fairing Bounding Volume and Shape | 7d | 2014-10-15 | 2014-10-21 | 62 |
| 98 | 10.3.2.3 | Design and CAD Fairing | 30d | 2014-10-22 | 2014-11-21 | 97 |
| 99 | 10.3.2.4 | Purchase Fairing components | 21d | 2014-11-22 | 2014-12-13 | 96, 98 |

| ID | WBS | Task | Duration | Start | Finish | Predecessors |
| --- | --- | --- | --- | --- | --- | --- |
| 100 | 10.3.3 | **Build (Aero)** | 67d | 2014-12-14 | 2015-02-22 | 95 |
| 101 | 10.3.3.1 | Build Molds | 30d | 2014-12-14 | 2015-01-14 | 99 |
| 102 | 10.3.3.2 | Build Fairings | 30d | 2015-01-15 | 2015-02-14 | 101 |
| 103 | 10.3.3.3 | Paint Fairings | 7d | 2015-02-15 | 2015-02-22 | 102 |
| 104 | 10.4 | **Electronics** | 253d | 2014-07-20 | 2015-04-06 | 9 |
| 105 | 10.4.1 | Define Requirements (Electronics) | 43d | 2014-07-20 | 2014-08-31 | 9 |
| 106 | 10.4.2 | **Design (Electronics)** | 49d | 2014-09-02 | 2014-10-21 | 105 |
| 107 | 10.4.2.1 | Define subcomponents | 1d | 2014-09-02 | 2014-09-02 | 105 |
| 108 | 10.4.2.2 | Define connectors | 7d | 2014-09-02 | 2014-09-08 | 105 |
| 109 | 10.4.2.3 | Define Data Bus | 7d | 2014-09-02 | 2014-09-08 | 105 |
| 110 | 10.4.2.4 | Design Critiical | 7d | 2014-09-09 | 2014-09-15 | 109 |
| 111 | 10.4.2.5 | Design Non-Critical | 7d | 2014-09-16 | 2014-09-22 | 110 |
| 112 | 10.4.2.6 | Design all Software | 7d | 2014-09-23 | 2014-09-29 | 109, 111 |
| 113 | 10.4.2.7 | Define Dimensions of all hardware | 7d | 2014-10-15 | 2014-10-21 | 62, 107, 108, 111 |
| 114 | 10.4.3 | **Buid (Electronics)** | 101d | 2014-10-22 | 2015-02-04 | 106 |
| 115 | 10.4.3.1 | **Critiical** | 100d | 2014-10-22 | 2015-02-03 | 106 |
| 116 | 10.4.3.1.1 | Datalogging | 100d | 2014-10-22 | 2015-02-03 | 106 |
| 117 | 10.4.3.1.2 | Low Voltaage Power | 60d | 2014-10-22 | 2014-12-22 | 106 |
| 118 | 10.4.3.1.3 | High Voltage Switching | 60d | 2014-10-22 | 2014-12-22 | 106 |
| 119 | 10.4.3.1.4 | Traction Control | 100d | 2014-10-22 | 2015-02-03 | 106 |
| 120 | 10.4.3.1.5 | Battery Managment system | 100d | 2014-10-22 | 2015-02-03 | 106 |
| 121 | 10.4.3.1.6 | Charging | 60d | 2014-10-22 | 2014-12-22 | 106 |
| 122 | 10.4.3.1.7 | Wiring harness | 60d | 2014-10-22 | 2014-12-22 | 106 |
| 123 | 10.4.3.2 | Build all Other | 1d | 2015-02-04 | 2015-02-04 | 106, 115 |
| 124 | 10.4.3.3 | Write Software | 100d | 2014-10-22 | 2015-02-03 | 106 |

| ID | WBS | Task | Duration | Start | Finish | Predecessors | Complete |
| --- | --- | --- | --- | --- | --- | --- | --- |
| 125 | 10.4.4 | **Integration Testing (Electronics)** | 60d | 2015-02-05 | 2015-04-06 | 114 |  |
| 126 | 10.4.4.1 | Software Testing | 30d | 2015-02-05 | 2015-03-07 | 114 | 1% |
| 127 | 10.4.4.2 | Unit Testing Critical | 30d | 2015-02-05 | 2015-03-07 | 114 |  |
| 128 | 10.4.4.3 | Full Electrical testing | 30d | 2015-03-08 | 2015-04-06 | 114, 127 |  |
| 129 | 10.5 | Mount Powertrain | 21d | 2015-03-08 | 2015-03-28 | 11 |  |
| 130 | 10.6 | Mount Electronics | 7d | 2015-04-07 | 2015-04-13 | 104, 129 |  |
| 131 | 10.7 | Assemble Full Vehicle | 14d | 2015-04-14 | 2015-04-27 | 48, 93, 129, 130 |  |
| 132 | 11 | **Integration Testing (RW-3)** | 52d | 2015-04-28 | 2015-06-19 | 10 |  |
| 133 | 11.1 | First Spin | 7d | 2015-04-28 | 2015-05-04 | 10 |  |
| 134 | 11.2 | Vehicle Dyno Testing | 15d | 2015-05-05 | 2015-05-19 | 133 |  |
| 135 | 11.3 | Vehicle Road Testing | 30d | 2015-05-20 | 2015-06-19 | 134 |  |
